# NR Delivery Plan 20240222

Schedule from MS Project, 2025-01-01 to 2026-01-01, status date 2025-03-14, A marks actual dates.

## Calendars

- Soli_Calendar: Mon-Thu 08:00-16:00; Fri-Sat off; Sun 08:00-16:00.

## Schedule

| ID | WBS | Task | Duration | Start | Finish | Predecessors | Complete | Remaining | Actual start | Total slack | Free slack | Constraint | Category |
| --- | --- | --- | --- | --- | --- | --- | --- | --- | --- | --- | --- | --- | --- |
| 1 | 1 | **Orange Phase(2)** | 262d? | 2025-01-01 A | 2026-01-01 |  | 43% | 148.15d? |  |  |  |  |  |
| 2 | 1.1 | **New Requirements** | 261d? | 2025-01-01 A | 2025-12-31 |  | 50% | 129.39d? |  |  |  |  |  |
| 3 | 1.1.1 | **Integration** | 42d? | 2025-02-02 | 2025-03-31 |  | 47% | 22.17d? | 2025-02-10 |  |  |  |  |
| 4 | 1.1.1.1 | Comm. Matrix | 5d | 2025-02-10 A | 2025-02-16 A |  | 100% |  |  |  |  | start no earlier than 2025-02-10 |  |
| 5 | 1.1.1.2 | **STP** | 14d | 2025-02-17 A | 2025-03-06 | 4 | 70% | 4.2d |  | 215d |  |  | STP Integration |
| 6 | 1.1.1.2.1 | Analysis | 2d | 2025-02-17 A | 2025-02-18 A |  | 100% |  |  |  |  |  | STP Integration |
| 7 | 1.1.1.2.2 | RAT Meeting | 1d | 2025-02-19 A | 2025-02-19 A | 6 | 100% |  |  |  |  |  | STP Integration |
| 8 | 1.1.1.2.3 | Define Work Load | 1d | 2025-02-20 A | 2025-02-20 A | 7 | 100% |  |  |  |  |  | STP Integration |
| 9 | 1.1.1.2.4 | Approve Work Load | 1d | 2025-02-23 A | 2025-02-23 A | 8 | 100% |  |  |  |  |  | STP Integration |
| 10 | 1.1.1.2.5 | Development | 7d | 2025-02-24 A | 2025-03-04 | 9 | 60% | 2.8d |  | 0.6d | 0d |  | STP Integration |
| 11 | 1.1.1.2.6 | Customer Implementation Approval | 1d | 2025-03-05 | 2025-03-05 | 10 |  |  |  | 0.6d | 0d |  | STP Integration |
| 12 | 1.1.1.2.7 | System Implementation | 1d | 2025-03-06 A | 2025-03-06 | 11 | 60% | 0.4d |  | 215d |  |  | STP Integration |
| 13 | 1.1.1.3 | **Mobilum** | 14d | 2025-02-17 | 2025-03-06 | 4 |  |  |  | 215d |  |  | Mobilum Integration |
| 14 | 1.1.1.3.1 | Analysis | 2d | 2025-02-17 | 2025-02-18 |  |  |  |  | 215d | 0d |  | Mobilum Integration |
| 15 | 1.1.1.3.2 | RAT Meeting | 1d | 2025-02-19 | 2025-02-19 | 14 |  |  |  | 215d | 0d |  | Mobilum Integration |
| 16 | 1.1.1.3.3 | Define Work Load | 1d | 2025-02-20 | 2025-02-20 | 15 |  |  |  | 215d | 0d |  | Mobilum Integration |
| 17 | 1.1.1.3.4 | Approve Work Load | 1d | 2025-02-23 | 2025-02-23 | 16 |  |  |  | 215d | 0d |  | Mobilum Integration |
| 18 | 1.1.1.3.5 | Development | 7d | 2025-02-24 | 2025-03-04 | 17 |  |  |  | 215d | 0d |  | Mobilum Integration |
| 19 | 1.1.1.3.6 | Customer Implementation Approval | 1d | 2025-03-05 | 2025-03-05 | 18 |  |  |  | 215d | 0d |  | Mobilum Integration |
| 20 | 1.1.1.3.7 | System Implementation | 1d | 2025-03-06 | 2025-03-06 | 19 |  |  |  | 215d |  |  | Mobilum Integration |
| 21 | 1.1.1.4 | **NetEco** | 14d | 2025-02-17 A | 2025-03-06 A | 4 | 100% |  |  |  |  |  | NetEco Integration |
| 22 | 1.1.1.4.1 | Analysis | 2d | 2025-02-17 A | 2025-02-18 A |  | 100% |  |  |  |  |  | NetEco Integration |
| 23 | 1.1.1.4.2 | RAT Meeting | 1d | 2025-02-19 A | 2025-02-19 A | 22 | 100% |  |  |  |  |  | NetEco Integration |
| 24 | 1.1.1.4.3 | Define Work Load | 1d | 2025-02-20 A | 2025-02-20 A | 23 | 100% |  |  |  |  |  | NetEco Integration |
| 25 | 1.1.1.4.4 | Approve Work Load | 1d | 2025-02-23 A | 2025-02-23 A | 24 | 100% |  |  |  |  |  | NetEco Integration |
| 26 | 1.1.1.4.5 | Development | 7d | 2025-02-24 A | 2025-03-04 A | 25 | 100% |  |  |  |  |  | NetEco Integration |
| 27 | 1.1.1.4.6 | Customer Implementation Approval | 1d | 2025-03-05 A | 2025-03-05 A | 26 | 100% |  |  |  |  |  | NetEco Integration |
| 28 | 1.1.1.4.7 | System Implementation | 1d | 2025-03-06 A | 2025-03-06 A | 27 | 100% |  |  |  |  |  | NetEco Integration |

Notes:
- 3: 2025-03-14: 1) NetEco: Completed. 2) STP: Pending on customer to provide MIB file. 3)Mobilum: Pending on customer to configure NBI data. 4) UNHA: Under analysis. / 2025-03-10: 1) NetEco: Completed. 2) STP: Pending on customer to provide MIB file. 3)Mobilum: Pending on customer to configure NBI data. 4) UNHA: Under analysis. / 2025-03-04: 1) NetEco: Completed. 2) STP: Pending on customer to provide MIB file. 3)Mobilum: Pending on customer to configure NBI data. 4) UNHA: Under analysis. / 2025-02-23: Pending on communication matrix / 2025-02-17: Pending on communication matrix / 2025-02-06: Communication matrix & the needed NBI data is sent to customer. Only provide NetEco NBI data

| ID | WBS | Task | Duration | Start | Finish | Predecessors | Complete | Remaining | Actual start | Total slack | Free slack | Category |
| --- | --- | --- | --- | --- | --- | --- | --- | --- | --- | --- | --- | --- |
| 29 | 1.1.1.5 | **UNCHA** | 14d | 2025-02-17 | 2025-03-06 | 4 |  |  |  | 215d |  | UNCHA Integration |
| 30 | 1.1.1.5.1 | Analysis | 2d | 2025-02-17 | 2025-02-18 |  |  |  |  | 215d | 0d | UNCHA Integration |
| 31 | 1.1.1.5.2 | RAT Meeting | 1d | 2025-02-19 | 2025-02-19 | 30 |  |  |  | 215d | 0d | UNCHA Integration |
| 32 | 1.1.1.5.3 | Define Work Load | 1d | 2025-02-20 | 2025-02-20 | 31 |  |  |  | 215d | 0d | UNCHA Integration |
| 33 | 1.1.1.5.4 | Approve Work Load | 1d | 2025-02-23 | 2025-02-23 | 32 |  |  |  | 215d | 0d | UNCHA Integration |
| 34 | 1.1.1.5.5 | Development | 7d | 2025-02-24 | 2025-03-04 | 33 |  |  |  | 215d | 0d | UNCHA Integration |
| 35 | 1.1.1.5.6 | Customer Implementation Approval | 1d | 2025-03-05 | 2025-03-05 | 34 |  |  |  | 215d | 0d | UNCHA Integration |
| 36 | 1.1.1.5.7 | System Implementation | 1d | 2025-03-06 | 2025-03-06 | 35 |  |  |  | 215d |  | UNCHA Integration |
| 37 | 1.1.2 | **Use Cases** | 108d | 2025-02-02 | 2025-07-01 |  | 21% | 85.79d | 2025-03-01 |  |  |  |
| 38 | 1.1.2.1 | **CMDB Auto Update** | 46d | 2025-03-01 | 2025-05-01 |  | 74% | 11.79d | 2025-03-02 |  |  | HP database Update Via Autin |
| 39 | 1.1.2.1.1 | Analysis | 2d | 2025-03-02 A | 2025-03-03 A |  | 100% |  |  |  |  | HP database Update Via Autin |
| 40 | 1.1.2.1.2 | RAT Meeting | 1d | 2025-03-04 A | 2025-03-04 A | 39 | 100% |  |  |  |  | HP database Update Via Autin |
| 41 | 1.1.2.1.3 | Define Work Load | 1d | 2025-03-05 A | 2025-03-05 A | 40 | 100% |  |  |  |  | HP database Update Via Autin |
| 42 | 1.1.2.1.4 | Approve Work Load | 1d | 2025-03-06 A | 2025-03-06 A | 41 | 100% |  |  |  |  | HP database Update Via Autin |
| 43 | 1.1.2.1.5 | Development | 30d | 2025-03-09 A | 2025-04-17 | 42 | 80% | 6d |  | 181d | 0d | HP database Update Via Autin |
| 44 | 1.1.2.1.6 | Customer Implementation Approval | 2d | 2025-04-20 | 2025-04-21 | 43 |  |  |  | 181d | 0d | HP database Update Via Autin |
| 45 | 1.1.2.1.7 | System Implementation | 2d | 2025-04-22 | 2025-04-23 | 44 |  |  |  | 181d |  | HP database Update Via Autin |
| 46 | 1.1.2.2 | **HP database Update Via Autin** | 46d | 2025-03-01 | 2025-05-01 |  |  |  |  |  |  | HP database Update Via Autin |
| 47 | 1.1.2.2.1 | Analysis | 2d | 2025-03-02 | 2025-03-03 |  |  |  |  | 181d | 0d | HP database Update Via Autin |
| 48 | 1.1.2.2.2 | RAT Meeting | 1d | 2025-03-04 | 2025-03-04 | 47 |  |  |  | 181d | 0d | HP database Update Via Autin |
| 49 | 1.1.2.2.3 | Define Work Load | 1d | 2025-03-05 | 2025-03-05 | 48 |  |  |  | 181d | 0d | HP database Update Via Autin |
| 50 | 1.1.2.2.4 | Approve Work Load | 1d | 2025-03-06 | 2025-03-06 | 49 |  |  |  | 181d | 0d | HP database Update Via Autin |
| 51 | 1.1.2.2.5 | Development | 30d | 2025-03-09 | 2025-04-17 | 50 |  |  |  | 181d | 0d | HP database Update Via Autin |
| 52 | 1.1.2.2.6 | Customer Implementation Approval | 2d | 2025-04-20 | 2025-04-21 | 51 |  |  |  | 181d | 0d | HP database Update Via Autin |
| 53 | 1.1.2.2.7 | System Implementation | 2d | 2025-04-22 | 2025-04-23 | 52 |  |  |  | 181d |  | HP database Update Via Autin |

Notes:
- 38: 2025-03-14: 1) Device Upsert API --> Done 2) Site Upsert API --> Done 3) Building offline env --> Done 4) data schenduling --> inprogress 5) API Calling --> inprogress / 2025-03-10: 1) Device Upsert API --> Done 2) Site Upsert API --> Done 3) Building offline env --> Done 4) data schenduling --> inprogress 5) API Calling --> inprogress / 2025-03-04: 1) Device Upsert API --> Done 2) Site Upsert API --> under development 3) Building offline env --> Done 4) data schenduling --> inprogress / 2025-02-23: 1) Device Upsert API --> Done 2) Site Upsert API --> under development 3) Building offline env --> inprogress 4) data schenduling --> inprogress / 2025-02-17: 1) Device Upsert API --> Done 2) Site Upsert API --> under development 3) Building offline env --> inprogress 4) data schenduling --> inprogress / 2025-02-06: Under development
- 46: 2025-02-23: Under analysis / 2025-02-17: Under analysis

| ID | WBS | Task | Duration | Start | Finish | Predecessors | Total slack | Free slack | Category |
| --- | --- | --- | --- | --- | --- | --- | --- | --- | --- |
| 54 | 1.1.2.3 | **Solar Module Management APP** | 22d | 2025-05-02 | 2025-06-01 |  |  |  | Solar Module Management APP |
| 55 | 1.1.2.3.1 | Analysis | 2d | 2025-05-04 | 2025-05-05 |  | 154d | 0d | Solar Module Management APP |
| 56 | 1.1.2.3.2 | RAT Meeting | 1d | 2025-05-06 | 2025-05-06 | 55 | 154d | 0d | Solar Module Management APP |
| 57 | 1.1.2.3.3 | Define Work Load | 1d | 2025-05-07 | 2025-05-07 | 56 | 154d | 0d | Solar Module Management APP |
| 58 | 1.1.2.3.4 | Approve Work Load | 1d | 2025-05-08 | 2025-05-08 | 57 | 154d | 0d | Solar Module Management APP |
| 59 | 1.1.2.3.5 | Development | 14d | 2025-05-11 | 2025-05-28 | 58 | 154d | 0d | Solar Module Management APP |
| 60 | 1.1.2.3.6 | Customer Implementation Approval | 1d | 2025-05-29 | 2025-05-29 | 59 | 154d | 0d | Solar Module Management APP |
| 61 | 1.1.2.3.7 | System Implementation | 1d | 2025-06-01 | 2025-06-01 | 60 | 154d |  | Solar Module Management APP |
| 62 | 1.1.2.4 | **Battery Backup Duration Intelligent Prediction** | 22d | 2025-06-02 | 2025-07-01 |  |  |  | Battery Backup Duration Intelligent Prediction |
| 63 | 1.1.2.4.1 | Analysis | 2d | 2025-06-02 | 2025-06-03 |  | 133d | 0d | Battery Backup Duration Intelligent Prediction |
| 64 | 1.1.2.4.2 | RAT Meeting | 1d | 2025-06-04 | 2025-06-04 | 63 | 133d | 0d | Battery Backup Duration Intelligent Prediction |
| 65 | 1.1.2.4.3 | Define Work Load | 1d | 2025-06-05 | 2025-06-05 | 64 | 133d | 0d | Battery Backup Duration Intelligent Prediction |
| 66 | 1.1.2.4.4 | Approve Work Load | 1d | 2025-06-08 | 2025-06-08 | 65 | 133d | 0d | Battery Backup Duration Intelligent Prediction |
| 67 | 1.1.2.4.5 | Development | 14d | 2025-06-09 | 2025-06-26 | 66 | 133d | 0d | Battery Backup Duration Intelligent Prediction |
| 68 | 1.1.2.4.6 | Customer Implementation Approval | 1d | 2025-06-29 | 2025-06-29 | 67 | 133d | 0d | Battery Backup Duration Intelligent Prediction |
| 69 | 1.1.2.4.7 | System Implementation | 1d | 2025-06-30 | 2025-06-30 | 68 | 133d |  | Battery Backup Duration Intelligent Prediction |
| 70 | 1.1.2.5 | **Precise Modernization Plan of Battery& Generator** | 22d | 2025-06-02 | 2025-07-01 |  |  |  | Precise Modernization Plan of Battery& Generator |
| 71 | 1.1.2.5.1 | Analysis | 2d | 2025-06-02 | 2025-06-03 |  | 133d | 0d | Precise Modernization Plan of Battery & Generator |
| 72 | 1.1.2.5.2 | RAT Meeting | 1d | 2025-06-04 | 2025-06-04 | 71 | 133d | 0d | Precise Modernization Plan of Battery& Generator |
| 73 | 1.1.2.5.3 | Define Work Load | 1d | 2025-06-05 | 2025-06-05 | 72 | 133d | 0d | Precise Modernization Plan of Battery& Generator |
| 74 | 1.1.2.5.4 | Approve Work Load | 1d | 2025-06-08 | 2025-06-08 | 73 | 133d | 0d | Precise Modernization Plan of Battery& Generator |
| 75 | 1.1.2.5.5 | Development | 14d | 2025-06-09 | 2025-06-26 | 74 | 133d | 0d | Precise Modernization Plan of Battery& Generator |
| 76 | 1.1.2.5.6 | Customer Implementation Approval | 1d | 2025-06-29 | 2025-06-29 | 75 | 133d | 0d | Precise Modernization Plan of Battery& Generator |
| 77 | 1.1.2.5.7 | System Implementation | 1d | 2025-06-30 | 2025-06-30 | 76 | 133d |  | Precise Modernization Plan of Battery& Generator |

| ID | WBS | Task | Duration | Start | Finish | Predecessors | Complete | Remaining | Actual start | Actual finish | Total slack | Free slack | Category |
| --- | --- | --- | --- | --- | --- | --- | --- | --- | --- | --- | --- | --- | --- |
| 78 | 1.1.3 | **Customization** | 64d? | 2025-01-01 A | 2025-03-31 |  | 88% | 7.8d? |  |  |  |  |  |
| 79 | 1.1.3.1 | **Huawei Instability Report** | 23d | 2025-01-01 A | 2025-01-31 |  | 100% |  |  | 2025-01-28 |  |  | Huawei Instability Report |
| 80 | 1.1.3.1.1 | Analysis | 1d | 2025-01-01 A | 2025-01-01 A |  | 100% |  |  |  |  |  | Huawei Instability Report |
| 81 | 1.1.3.1.2 | RAT Meeting | 1d | 2025-01-02 A | 2025-01-02 A | 80 | 100% |  |  |  |  |  | Huawei Instability Report |
| 82 | 1.1.3.1.3 | Define Work Load | 1d | 2025-01-05 A | 2025-01-05 A | 81 | 100% |  |  |  |  |  | Huawei Instability Report |
| 83 | 1.1.3.1.4 | Approve Work Load | 1d | 2025-01-06 A | 2025-01-06 A | 82 | 100% |  |  |  |  |  | Huawei Instability Report |
| 84 | 1.1.3.1.5 | Development | 14d | 2025-01-07 A | 2025-01-26 A | 83 | 100% |  |  |  |  |  | Huawei Instability Report |
| 85 | 1.1.3.1.6 | Customer Implementation Approval | 1d | 2025-01-27 A | 2025-01-27 A | 84 | 100% |  |  |  |  |  | Huawei Instability Report |
| 86 | 1.1.3.1.7 | System Implementation | 1d | 2025-01-28 A | 2025-01-28 A | 85 | 100% |  |  |  |  |  | Huawei Instability Report |
| 87 | 1.1.3.2 | **Esclation Tool** | 23d | 2025-03-01 | 2025-03-31 |  | 76% | 5.48d | 2025-03-02 |  |  |  | Esclation Tool |
| 88 | 1.1.3.2.1 | Analysis | 1d | 2025-03-02 A | 2025-03-02 A |  | 100% |  |  |  |  |  | Esclation Tool |
| 89 | 1.1.3.2.2 | RAT Meeting | 1d | 2025-03-03 A | 2025-03-03 A | 88 | 100% |  |  |  |  |  | Esclation Tool |
| 90 | 1.1.3.2.3 | Define Work Load | 1d | 2025-03-04 A | 2025-03-04 A | 89 | 100% |  |  |  |  |  | Esclation Tool |
| 91 | 1.1.3.2.4 | Approve Work Load | 1d | 2025-03-05 A | 2025-03-05 A | 90 | 100% |  |  |  |  |  | Esclation Tool |
| 92 | 1.1.3.2.5 | Development | 15d | 2025-03-06 A | 2025-03-26 | 91 | 80% | 3d |  |  | 199d | 0d | Esclation Tool |
| 93 | 1.1.3.2.6 | Customer Implementation Approval | 1d | 2025-03-27 | 2025-03-27 | 92 |  |  |  |  | 199d | 0d | Esclation Tool |
| 94 | 1.1.3.2.7 | System Implementation | 1d | 2025-03-30 | 2025-03-30 | 93 |  |  |  |  | 199d |  | Esclation Tool |
| 95 | 1.1.4 | **Dashboards** | 44d | 2025-04-01 | 2025-06-01 |  | 10% | 39.6d | 2025-03-01 |  |  |  |  |
| 96 | 1.1.4.1 | **Digital Energy Operation Health Check Dashboard** | 22d | 2025-04-01 | 2025-04-30 |  |  |  |  |  |  |  | Digital Energy Operation Health Check Dashboard |
| 97 | 1.1.4.1.1 | Analysis | 2d | 2025-04-01 | 2025-04-02 |  |  |  |  |  | 176d | 0d | Digital Energy Operation Health Check Dashboard |
| 98 | 1.1.4.1.2 | RAT Meeting | 1d | 2025-04-03 | 2025-04-03 | 97 |  |  |  |  | 176d | 0d | Digital Energy Operation Health Check Dashboard |
| 99 | 1.1.4.1.3 | Define Work Load | 1d | 2025-04-06 | 2025-04-06 | 98 |  |  |  |  | 176d | 0d | Digital Energy Operation Health Check Dashboard |
| 100 | 1.1.4.1.4 | Approve Work Load | 1d | 2025-04-07 | 2025-04-07 | 99 |  |  |  |  | 176d | 0d | Digital Energy Operation Health Check Dashboard |
| 101 | 1.1.4.1.5 | Development | 15d | 2025-04-08 | 2025-04-28 | 100 |  |  |  |  | 176d | 0d | Digital Energy Operation Health Check Dashboard |
| 102 | 1.1.4.1.6 | Customer Implementation Approval | 1d | 2025-04-29 | 2025-04-29 | 101 |  |  |  |  | 176d | 0d | Digital Energy Operation Health Check Dashboard |
| 103 | 1.1.4.1.7 | System Implementation | 1d | 2025-04-30 | 2025-04-30 | 102 |  |  |  |  | 176d |  | Digital Energy Operation Health Check Dashboard |

Notes:
- 87: 2025-02-23: Under development

| ID | WBS | Task | Duration | Start | Finish | Predecessors | Complete | Remaining | Total slack | Free slack | Category |
| --- | --- | --- | --- | --- | --- | --- | --- | --- | --- | --- | --- |
| 104 | 1.1.4.2 | **Digital Energy Operation Analysis Dashboard** | 21d | 2025-05-01 | 2025-05-29 |  |  |  |  |  | Digital Energy Operation Analysis Dashboard |
| 105 | 1.1.4.2.1 | Analysis | 2d | 2025-05-01 | 2025-05-04 |  |  |  | 155d | 0d | Digital Energy Operation Analysis Dashboard |
| 106 | 1.1.4.2.2 | RAT Meeting | 1d | 2025-05-05 | 2025-05-05 | 105 |  |  | 155d | 0d | Digital Energy Operation Analysis Dashboard |
| 107 | 1.1.4.2.3 | Define Work Load | 1d | 2025-05-06 | 2025-05-06 | 106 |  |  | 155d | 0d | Digital Energy Operation Analysis Dashboard |
| 108 | 1.1.4.2.4 | Approve Work Load | 1d | 2025-05-07 | 2025-05-07 | 107 |  |  | 155d | 0d | Digital Energy Operation Analysis Dashboard |
| 109 | 1.1.4.2.5 | Development | 14d | 2025-05-08 | 2025-05-27 | 108 |  |  | 155d | 0d | Digital Energy Operation Analysis Dashboard |
| 110 | 1.1.4.2.6 | Customer Implementation Approval | 1d | 2025-05-28 | 2025-05-28 | 109 |  |  | 155d | 0d | Digital Energy Operation Analysis Dashboard |
| 111 | 1.1.4.2.7 | System Implementation | 1d | 2025-05-29 | 2025-05-29 | 110 |  |  | 155d |  | Digital Energy Operation Analysis Dashboard |
| 112 | 1.1.4.3 | **NOC Dashboard** | 46d | 2025-03-01 A | 2025-05-04 |  | 30% | 31.98d | 174d |  | NOC Dashboard |
| 113 | 1.1.4.3.1 | Analysis | 2d | 2025-03-01 A | 2025-03-03 A |  | 100% |  |  |  | NOC Dashboard |
| 114 | 1.1.4.3.2 | RAT Meeting | 1d | 2025-05-04 A | 2025-05-04 A | 113 | 100% |  |  |  | NOC Dashboard |
| 115 | 1.1.4.3.3 | Define Work Load | 1d | 2025-03-05 A | 2025-03-05 A | 114 | 100% |  |  |  | NOC Dashboard |
| 116 | 1.1.4.3.4 | Approve Work Load | 1d | 2025-03-06 A | 2025-03-06 A | 115 | 100% |  |  |  | NOC Dashboard |
| 117 | 1.1.4.3.5 | Development | 14d | 2025-03-09 A | 2025-04-17 | 116 | 10% | 12.6d | 183.4d | 0d | NOC Dashboard |
| 118 | 1.1.4.3.6 | Customer Implementation Approval | 1d | 2025-04-17 | 2025-04-20 | 117 |  |  | 183.4d | 0d | NOC Dashboard |
| 119 | 1.1.4.3.7 | System Implementation | 1d | 2025-04-20 | 2025-04-21 | 118 |  |  | 183.4d |  | NOC Dashboard |
| 120 | 1.1.5 | **Grouping TT** | 14d | 2025-05-01 | 2025-05-20 |  |  |  |  |  |  |
| 121 | 1.1.5.1 | **Update Fault Recovary Time** | 14d | 2025-05-01 | 2025-05-20 |  |  |  |  |  | Grouping Fault Recovary Time |
| 122 | 1.1.5.1.1 | Analysis | 1d | 2025-05-01 | 2025-05-01 |  |  |  | 165d | 0d | Grouping Fault Recovary Time |
| 123 | 1.1.5.1.2 | RAT Meeting | 1d | 2025-05-04 | 2025-05-04 | 122 |  |  | 165d | 0d | Grouping Fault Recovary Time |
| 124 | 1.1.5.1.3 | Define Work Load | 1d | 2025-05-05 | 2025-05-05 | 123 |  |  | 165d | 0d | Grouping Fault Recovary Time |
| 125 | 1.1.5.1.4 | Approve Work Load | 1d | 2025-05-06 | 2025-05-06 | 124 |  |  | 165d | 0d | Grouping Fault Recovary Time |
| 126 | 1.1.5.1.5 | Development | 5d | 2025-05-07 | 2025-05-13 | 125 |  |  | 165d | 0d | Grouping Fault Recovary Time |
| 127 | 1.1.5.1.6 | Customer Implementation Approval | 1d | 2025-05-14 | 2025-05-14 | 126 |  |  | 165d | 0d | Grouping Fault Recovary Time |
| 128 | 1.1.5.1.7 | System Implementation | 1d | 2025-05-15 | 2025-05-15 | 127 |  |  | 165d |  | Grouping Fault Recovary Time |

Notes:
- 112: 2025-03-14: UI under development / 2025-03-10: UI under development / 2025-02-17: under analysis

| ID | WBS | Task | Type | Duration | Start | Finish | Predecessors | Complete | Remaining | Actual finish | Total slack | Free slack | Category |
| --- | --- | --- | --- | --- | --- | --- | --- | --- | --- | --- | --- | --- | --- |
| 129 | 1.1.6 | **Topology** |  | 129d | 2025-01-01 A | 2025-06-30 |  | 89% | 13.57d |  |  |  |  |
| 130 | 1.1.6.1 | **Manually** |  | 64d | 2025-01-01 A | 2025-03-31 |  | 93% | 4.2d |  |  |  |  |
| 131 | 1.1.6.1.1 | **Collecting Data Manually** |  | 42d | 2025-01-01 A | 2025-02-27 |  | 100% |  | 2025-02-11 |  |  |  |
| 132 | 1.1.6.1.1.1 | Wireless Huawei |  | 5d | 2025-01-01 A | 2025-01-07 A |  | 100% |  |  |  |  | TOPO - Manual Collection |
| 133 | 1.1.6.1.1.2 | Wireless Nokia |  | 10d | 2025-01-01 A | 2025-01-14 A |  | 100% |  |  |  |  | TOPO - Manual Collection |
| 134 | 1.1.6.1.1.3 | TX Ericsson |  | 10d | 2025-01-01 A | 2025-01-14 A |  | 100% |  |  |  |  | TOPO - Manual Collection |
| 135 | 1.1.6.1.1.4 | TX NEC |  | 10d | 2025-01-01 A | 2025-01-14 A |  | 100% |  |  |  |  | TOPO - Manual Collection |
| 136 | 1.1.6.1.1.5 | Access IPRAN Nokia |  | 30d | 2025-01-01 A | 2025-02-11 A |  | 100% |  |  |  |  | TOPO - Manual Collection |
| 137 | 1.1.6.1.2 | **GSC Data Collection Configuration (DIM)** |  | 45d | 2025-01-08 A | 2025-03-11 A |  | 100% |  |  |  |  |  |
| 138 | 1.1.6.1.2.1 | Wireless Huawei |  | 5d | 2025-01-08 A | 2025-01-14 A | 132 | 100% |  |  |  |  | TOPO - DIM |
| 139 | 1.1.6.1.2.2 | Wireless Nokia |  | 5d | 2025-01-15 A | 2025-01-21 A | 133 | 100% |  |  |  |  | TOPO - DIM |
| 140 | 1.1.6.1.2.3 | **TX Ericsson** |  | 15d | 2025-01-15 A | 2025-02-04 A | 134 | 100% |  |  |  |  | TOPO - DIM |
| 141 | 1.1.6.1.2.3.1 | Data parsing |  | 10d | 2025-01-15 A | 2025-01-28 A |  | 100% |  |  |  |  | TOPO - DIM |
| 142 | 1.1.6.1.2.3.2 | Core Rule Customization |  | 5d | 2025-01-29 A | 2025-02-04 A | 141 | 100% |  |  |  |  | TOPO - DIM |
| 143 | 1.1.6.1.2.4 | TX NEC |  | 5d | 2025-01-15 A | 2025-01-21 A | 135 | 100% |  |  |  |  | TOPO - DIM |
| 144 | 1.1.6.1.2.5 | Access IPRAN Nokia |  | 20d | 2025-02-12 A | 2025-03-11 A | 136 | 100% |  |  |  |  | TOPO - DIM |
| 145 | 1.1.6.1.3 | GSC Restoration |  | 3d | 2025-03-12 A | 2025-03-16 | 144 | 60% | 1.2d |  | 202d | 0d | TOPO - DIM |
| 146 | 1.1.6.1.4 | Verification with BO | milestone | 7d | 2025-03-17 | 2025-03-25 | 145 |  |  |  | 202d |  | TOPO -Manually |
| 147 | 1.1.6.2 | **Automation** |  | 33d | 2025-04-01 A | 2025-05-15 |  | 72% | 9.1d |  |  |  |  |
| 148 | 1.1.6.2.1 | Comm. Matrix | milestone | 7d | 2025-04-01 A | 2025-04-09 A |  | 100% |  |  |  |  | TOPO -AUTO |
| 149 | 1.1.6.2.2 | **EMS Scheduling** |  | 2d | 2025-04-10 A | 2025-04-13 | 148 | 60% | 0.8d |  | 8d | 0d | TOPO -AUTO |
| 150 | 1.1.6.2.2.1 | Wireless Huawei |  | 2d | 2025-04-10 | 2025-04-13 | 138 |  |  |  | 8d |  | TOPO -AUTO |
| 151 | 1.1.6.2.2.2 | Wireless Nokia |  | 2d | 2025-04-10 A | 2025-04-13 A | 139 | 100% |  |  |  |  | TOPO -AUTO |
| 152 | 1.1.6.2.2.3 | TX Ericsson |  | 2d | 2025-04-10 A | 2025-04-13 A | 140 | 100% |  |  |  |  | TOPO -AUTO |
| 153 | 1.1.6.2.2.4 | TX NEC |  | 2d | 2025-04-10 A | 2025-04-13 A | 143 | 100% |  |  |  |  | TOPO -AUTO |
| 154 | 1.1.6.2.2.5 | Access IPRAN Nokia |  | 2d | 2025-04-10 | 2025-04-13 | 144 |  |  |  | 8d |  | TOPO -AUTO |
| 155 | 1.1.6.2.3 | Update OWS Probe Configuration | milestone | 10d | 2025-04-14 A | 2025-04-27 | 149 | 80% | 2d |  | 177d | 0d | TOPO -AUTO |
| 156 | 1.1.6.2.4 | Restoration Scheduling |  | 2d | 2025-04-28 | 2025-04-29 | 155 |  |  |  | 177d |  | TOPO -AUTO |

Notes:
- 129: 2025-03-14: Auto: 1) Pending Orange OSS to schedule U2020 WL & TX NCE. 2) RR[2025030910806] raised to platform team to develop the script to collect all the data. 3) Pending on Orange to schedule mac data for E#. 4) Pending on Orange to compress MAC folders to can parse it / 2025-03-10: Auto: 1) Pending Orange OSS to schedule U2020 WL & TX NCE. 2) RR[2025030910806] raised to platform team to develop the script to collect all the data / 2025-03-04: Auto: 1) Pending Orange OSS to schedule WL. 2) Pending on platform team to develop the script to collect all the data / 2025-02-17: Auto: Pending Orange OSS to schedule WL / 2025-02-17: Manually: Pending on Nokia team to check the issue with the APIs. Auto: Pending Orange OSS to schedule WL
- 130: 2025-02-17: Manually: Pending on Nokia team to check the issue with the APIs. / 2025-02-06: Pending on Nokia team to can fetch tunnel and port missing data...
- 131: 2025-02-17: 1- Orange will not provide Hua standard (MAC Table) for TX NEC while HQ can not customize. Need decision to go on with NOT HIGH accuracy or push orange to provide the standard one. 2- Pending on Nokia team to check the issue with the APIs. / 2025-02-06: 1- Orange will not provide Hua standard (MAC Table) for TX NEC while HQ can not customize. Need decision to go on with NOT HIGH accuracy or push orange to provide the standard one. 2- Pending on Nokia team to can fetch tunnel and port missing
- 135: 2025-02-17: Orange will not provide Hua standard (MAC Table) while HQ can not customize. Need decision to go on with NOT HIGH accuracy or push orange to provide the standard one.... / 2025-02-06: Orange will not provide Hua standard (MAC Table) while HQ can not customize. Need decision to go on with NOT HIGH accuracy or push orange to provide the standard one....
- 136: 2025-02-17: Pending on Nokia team to check the issue with the APIs. / 2025-02-06: Pending on Nokia team to can fetch tunnel and port missing data...
- 137: 2025-02-17: 1- Orange will not provide Hua standard (MAC Table) while HQ can not customize. Need decision to go on with NOT HIGH accuracy or push orange to provide the standard one. 2- Pending on Nokia team to check the issue with the APIs. / 2025-02-06: 1- Orange will not provide Hua standard (MAC Table) while HQ can not customize. Need decision to go on with NOT HIGH accuracy or push orange to provide the standard one. 2- Pending on Nokia team to can fetch tunnel and port missing data...
- 143: 2025-02-17: Orange will not provide Hua standard (MAC Table) while HQ can not customize. / 2025-02-06: Orange will not provide Hua standard (MAC Table) while HQ can not customize.
- 144: 2025-02-17: Pending on Nokia team to check the issue with the APIs. / 2025-02-06: Pending on Nokia team to can fetch tunnel and port missing data...
- 145: WL + TX + IPRAN
- 147: 2025-03-14: Auto: 1) Pending Orange OSS to schedule U2020 WL & TX NCE. 2) RR[2025030910806] raised to platform team to develop the script to collect all the data. 3) Pending on Orange to schedule mac data for E#. 4) Pending on Orange to compress MAC folders to can parse it / 2025-03-10: Auto: 1) Pending Orange OSS to schedule U2020 WL & TX NCE. 2) RR[2025030910806] raised to platform team to develop the script to collect all the data / 2025-03-04: 1) Pending Orange OSS to schedule WL. 2) Pending on platform team to develop the script to collect all the data / 2025-02-23: Pending OSS to schedule Huawei WL. / 2025-02-17: Pending OSS to schedule Huawei WL & Nokia team to check the issue with the APIs. / 2025-02-06: Pending OSS to schedule Huawei WL& Nokia team to Nokia team to can fetch tunnel and port missing data...
- 150: 2025-03-04: 1) Pending Orange OSS to schedule WL. 2) Pending on platform team to develop the script to collect all the data / 2025-02-17: Pending OSS Team to schedule the needed data... / 2025-02-06: Pending OSS Team to schedule the needed data...
- 154: 2025-03-04: Pending on platform team to develop the script to collect all the data / 2025-02-06: Pending on Nokia team to can fetch tunnel and port missing data...
- 155: 2025-03-04: 1) Pending Orange OSS to schedule WL. 2) Pending on platform team to develop the script to collect all the data / 2025-02-17: Nokia WL& NEC & E# automation has been finished. Nokia team to check the issue with the APIs. OSS team schedule Huawei WL... / 2025-02-06: Nokia WL& NEC & E# automation has been finished. Pending on Nokia team to can fetch tunnel and port missing data. OSS team schedule Huawei WL...

| ID | WBS | Task | Duration | Start | Finish | Complete | Remaining | Actual start | Actual finish | Total slack | Constraint | Category |
| --- | --- | --- | --- | --- | --- | --- | --- | --- | --- | --- | --- | --- |
| 157 | 1.2 | **Operation Stand-alone Tools** | 23d | 2025-01-01 A | 2025-01-31 | 100% |  |  | 2025-01-30 |  |  |  |
| 158 | 1.2.1 | Auto CMDB Update | 11d | 2025-01-01 A | 2025-01-15 A | 100% |  |  |  |  | finish no earlier than 2025-01-15 | External Tools |
| 159 | 1.2.2 | Autin HP Audit Tool | 11d | 2025-01-16 A | 2025-01-30 A | 100% |  |  |  |  | finish no earlier than 2025-01-30 | External Tools |
| 160 | 1.3 | **Issues** | 107d | 2025-02-10 | 2025-07-08 | 32% | 72.54d | 2025-01-01 |  |  |  |  |
| 161 | 1.3.1 | HP Not Response | 107d | 2025-02-10 | 2025-07-08 |  |  |  |  | 127d | start no earlier than 2025-02-10 | Issues |
| 162 | 1.3.2 | NTP Server Issue | 64d | 2025-02-10 A | 2025-05-08 | 20% | 51.2d |  |  | 170d | start no earlier than 2025-02-10 |  |
| 163 | 1.3.3 | FM To SDM Sync. | 37d | 2025-01-01 | 2025-02-20 |  |  |  |  | 225d | finish no earlier than 2025-02-20 | Issues |
| 164 | 1.3.4 | SDM To FM Sync. | 37d | 2025-02-10 | 2025-04-01 |  |  |  |  | 197d |  | Issues |
| 165 | 1.3.5 | Disk I/O 100% | 42d | 2025-02-10 A | 2025-04-08 | 60% | 16.8d |  |  | 192d | start no earlier than 2025-02-10 | Issues |
| 166 | 1.3.6 | Alarm Capacity Overload | 42d | 2025-02-10 A | 2025-04-08 | 60% | 16.8d |  |  | 192d | start no earlier than 2025-02-10 | Issues |
| 167 | 1.3.7 | Synthetic Clearance | 37d | 2025-02-10 A | 2025-04-01 | 80% | 7.4d |  |  | 197d |  | Issues |
| 168 | 1.3.8 | Derived Clearence | 37d | 2025-02-10 A | 2025-04-01 A | 100% |  |  |  |  |  | Issues |

Notes:
- 159: 2024-09-08: New req. sent with email subject 'AUTIN audit tool'...
- 161: 2024-09-08: Orange Feedback -> maintenance request we agreed to hold adding those areas till we finalize the mass update they need....
- 162: 2025-02-23: Need to check with OSS team.
- 163: 2025-02-17: Upgrade to R24 this week...
- 164: 2025-02-17: SR 37922144 was closed until issue happens again...
- 165: 2025-02-17: Expansion considered this month
- 166: 2025-02-17: Expansion considered soon
- 167: 2025-02-17: Upgrade to R24 this week...
- 168: 2025-02-17: Upgrade to R24 this week...
